# IST645F19A2BPatilS

Schedule from MS Project, 2019-09-30 to 2020-08-18, 5 hours a day, costs in $.

## Calendars

- Standard: Mon-Fri 08:00-12:00, 13:00-17:00; Sat-Sun off. Exceptions (off unless hours are given): 2019-11-28 (Thanksgiving Day), 2019-12-25 (Christmas), 2019-12-31 to 2020-01-01 (New year's).

## Resources

| Resource | Rate |
| --- | --- |
| Simaant Patil | 44 |
| Sagar Mohan | 36 |
| Philip Grome | 34 |
| Charles Hildebrant | 35 |
| JoAnne Sudderth | 40 |
| Li-Min Wang |  |
| Mary Papero | 30 |
| Nina Stevens | 33.75 |
| Michelle McCarthy | 32 |
| Ben Walsh |  |
| Jeremy Robinson |  |
| Samuel Edelstein |  |
| Samuel T. Moore |  |
| Christine Johnson |  |
| David K. Jaffe |  |
| Technical Training Fees | 500 |
| City DPW Dept Mgr- Street Maint |  |
| City DPW Dept Mgr- Streetlights |  |
| City DPW Dept Mgr- Traffic Signal and Signage |  |
| City DPW Dept Mgr- Trash Pickup |  |
| City DPW Dept Mgr- Parks Maintenance |  |
| City DPW Dept Mgr- Snow Plowing |  |
| David Pajak |  |

## Schedule

| ID | WBS | Task | Duration | Start | Finish | Predecessors | Total slack | Resources | Work | Cost |
| --- | --- | --- | --- | --- | --- | --- | --- | --- | --- | --- |
| 1 | 1 | **Project Initiation** | 5.79d | 2019-09-30 10:00 | 2019-10-03 15:58 |  | 0d |  | 33h | 890.93 |
| 2 | 1.1 | First Meeting | 0.06d | 2019-09-30 10:00 | 2019-09-30 10:18 |  | 0d | Charles Hildebrant; Christine Johnson; David K. Jaffe; JoAnne Sudderth; Li-Min Wang; Mary Papero; Michelle McCarthy; Nina Stevens; Philip Grome; Sagar Mohan; Samuel T. Moore; Simaant Patil; David Pajak | 4h | 87.62 |
| 3 | 1.2 | **Stakeholder Meeting** | 2.53d | 2019-10-01 13:18 | 2019-10-03 08:58 |  | 0d |  | 25h | 759.32 |
| 4 | 1.2.1 | Gather requirements | 0.33d | 2019-10-01 13:18 | 2019-10-01 14:58 | 2FS+2d | 0d | Charles Hildebrant; JoAnne Sudderth; Li-Min Wang; Mary Papero; Michelle McCarthy; Nina Stevens; Philip Grome; Sagar Mohan; Simaant Patil | 15h | 474.58 |
| 5 | 1.2.2 | Analyse stakeholder requirements | 0.2d | 2019-10-02 16:58 | 2019-10-03 08:58 | 4FS+2d | 0d | Charles Hildebrant; JoAnne Sudderth; Li-Min Wang; Mary Papero; Michelle McCarthy; Nina Stevens; Philip Grome; Sagar Mohan; Simaant Patil; David Pajak | 10h | 284.74 |
| 6 | 1.3 | **Meeting with Cityworks IT Staff** | 0.2d | 2019-10-03 14:58 | 2019-10-03 15:58 |  | 0d |  | 4h | 44 |
| 7 | 1.3.1 | Decide times for future meetings | 0.1d | 2019-10-03 14:58 | 2019-10-03 15:28 | 5FS+1d | 0d | Christine Johnson; David K. Jaffe; Samuel T. Moore; Simaant Patil | 2h | 22 |
| 8 | 1.3.2 | Understand structure of the organization | 0.1d | 2019-10-03 15:28 | 2019-10-03 15:58 | 7 | 0d | Christine Johnson; David K. Jaffe; Samuel T. Moore; Simaant Patil | 2h | 22 |
| 9 | 2 | **Planning for the Mobile App** | 43.13d | 2019-10-07 08:58 | 2019-11-13 08:36 |  | 0d |  | 301h | 7,503.36 |
| 10 | 2.1 | **Creating Project Charter** | 11.77d | 2019-10-07 08:58 | 2019-10-16 11:48 |  | 0d |  | 78h | 2,534.29 |
| 11 | 2.1.1 | Identify goals and objectives of the project | 0.44d | 2019-10-07 08:58 | 2019-10-07 11:11 | 8FS+2d | 0d | Charles Hildebrant; JoAnne Sudderth; Li-Min Wang; Mary Papero; Michelle McCarthy; Nina Stevens; Philip Grome; Sagar Mohan; Simaant Patil | 20h | 632.78 |
| 12 | 2.1.2 | Define scope | 0.33d | 2019-10-08 14:11 | 2019-10-08 15:51 | 11FS+2d | 0d | Charles Hildebrant; JoAnne Sudderth; Li-Min Wang; Mary Papero; Michelle McCarthy; Nina Stevens; Philip Grome; Sagar Mohan; Simaant Patil | 15h | 474.58 |
| 13 | 2.1.3 | Set milestones | 0.22d | 2019-10-09 11:51 | 2019-10-09 13:58 | 12FS+1d | 0d | Charles Hildebrant; JoAnne Sudderth; Li-Min Wang; Mary Papero; Michelle McCarthy; Nina Stevens; Philip Grome; Sagar Mohan; Simaant Patil | 10h | 316.39 |
| 14 | 2.1.4 | Prepare project charter | 2d | 2019-10-10 09:58 | 2019-10-11 11:58 | 13FS+1d | 0d | Simaant Patil | 10h | 440 |
| 15 | 2.1.5 | Present charter to stakeholders | 0.17d | 2019-10-14 08:58 | 2019-10-14 09:48 | 14FS+1d | 0d | Simaant Patil; Ben Walsh; Charles Hildebrant; Jeremy Robinson; Nina Stevens; Philip Grome | 5h | 122.29 |
| 16 | 2.1.6 | Modify scope if required | 0.6d | 2019-10-14 15:48 | 2019-10-15 09:48 | 15FS+1d | 0d | Charles Hildebrant; Nina Stevens; Philip Grome; Sagar Mohan; Simaant Patil | 15h | 548.25 |
| 17 | 2.1.7 | Charter approval | 1d | 2019-10-15 15:48 | 2019-10-16 11:48 | 16FS+1d | 0d |  | 3h |  |
| 18 | 2.2 | **Develop a Schedule Plan** | 2.5d | 2019-10-17 08:48 | 2019-10-18 14:18 |  | 0d |  | 12h | 373 |
| 19 | 2.2.1 | Create city IT team schedule | 0.5d | 2019-10-17 08:48 | 2019-10-17 11:18 | 17FS+1d | 0d | Philip Grome; Sagar Mohan; Simaant Patil; David Pajak | 10h | 285 |
| 20 | 2.2.2 | Provide schedule plan for Cityworks team | 1d | 2019-10-18 08:18 | 2019-10-18 14:18 | 19FS+1d | 0d | Simaant Patil [40%] | 2h | 88 |
| 21 | 2.3 | **Develop a WBS** | 2.07d | 2019-10-21 10:18 | 2019-10-22 13:38 |  | 0d |  | 12h | 468 |
| 22 | 2.3.1 | Create WBS | 0.67d | 2019-10-21 10:18 | 2019-10-21 14:38 | 20FS+1d | 0d | Philip Grome; Sagar Mohan; Simaant Patil | 10h | 380 |
| 23 | 2.3.2 | Get WBS approved by stakeholders | 0.4d | 2019-10-22 10:38 | 2019-10-22 13:38 | 22FS+1d | 0d | Simaant Patil | 2h | 88 |
| 24 | 2.4 | **Risk Management Plan** | 3.07d | 2019-10-23 09:38 | 2019-10-25 08:58 |  | 0d |  | 32h | 608 |
| 25 | 2.4.1 | Identify the risks | 0.33d | 2019-10-23 09:38 | 2019-10-23 11:18 | 23FS+1d | 0d | Christine Johnson; David K. Jaffe; Philip Grome; Sagar Mohan; Samuel T. Moore; Simaant Patil | 10h | 190 |
| 26 | 2.4.2 | Develop plans to tackle risks | 0.4d | 2019-10-24 08:18 | 2019-10-24 10:18 | 25FS+1d | 0d | Christine Johnson; David K. Jaffe; Philip Grome; Sagar Mohan; Samuel T. Moore; Simaant Patil | 12h | 228 |
| 27 | 2.4.3 | Document the risks and plans of action | 0.33d | 2019-10-24 16:18 | 2019-10-25 08:58 | 26FS+1d | 0d | Christine Johnson; David K. Jaffe; Philip Grome; Sagar Mohan; Samuel T. Moore; Simaant Patil | 10h | 190 |

| ID | WBS | Task | Duration | Start | Finish | Predecessors | Total slack | Resources | Work | Cost |
| --- | --- | --- | --- | --- | --- | --- | --- | --- | --- | --- |
| 28 | 2.5 | **Communication Plan** | 0.6d | 2019-10-28 10:58 | 2019-10-28 14:58 |  | 0d |  | 3h | 132 |
| 29 | 2.5.1 | Develop a plan for regular updates | 0.6d | 2019-10-28 10:58 | 2019-10-28 14:58 | 27FS+2d | 0d | Simaant Patil | 3h | 132 |
| 30 | 2.6 | **Cost Plan** | 2.71d | 2019-10-29 10:58 | 2019-10-31 08:32 |  | 0d |  | 50h | 966.43 |
| 31 | 2.6.1 | Calculate total cost for all resources required | 1d | 2019-10-29 10:58 | 2019-10-29 16:58 | 29FS+1d | 0d | Charles Hildebrant; Jeremy Robinson; Nina Stevens; Simaant Patil; David Pajak | 25h | 563.75 |
| 32 | 2.6.2 | Calculate the estimated cost for each capability of the app | 0.71d | 2019-10-30 13:58 | 2019-10-31 08:32 | 31FS+1d | 0d | Charles Hildebrant; Jeremy Robinson; Nina Stevens; Simaant Patil; Christine Johnson; David K. Jaffe; Samuel T. Moore | 25h | 402.68 |
| 33 | 2.7 | **Design Plan** | 5d | 2019-10-31 14:32 | 2019-11-05 15:32 |  | 0d |  | 105h | 2,291.25 |
| 34 | 2.7.1 | Design plan of each capability of the app | 0.86d | 2019-10-31 14:32 | 2019-11-01 09:49 | 32FS+1d | 0d | Charles Hildebrant; Christine Johnson; David K. Jaffe; JoAnne Sudderth; Nina Stevens; Samuel T. Moore; Simaant Patil | 30h | 654.64 |
| 35 | 2.7.2 | Intergration design plan for all capabilities of the app | 1.14d | 2019-11-01 15:49 | 2019-11-04 13:32 | 34FS+1d | 0d | Charles Hildebrant; Christine Johnson; David K. Jaffe; JoAnne Sudderth; Nina Stevens; Samuel T. Moore; Simaant Patil | 40h | 872.86 |
| 36 | 2.7.3 | Design plan for prototype of the app | 1d | 2019-11-05 09:32 | 2019-11-05 15:32 | 35FS+1d | 0d | Charles Hildebrant; Christine Johnson; David K. Jaffe; JoAnne Sudderth; Nina Stevens; Samuel T. Moore; Simaant Patil | 35h | 763.75 |
| 37 | 2.8 | Project Plan Approval | 0.09d | 2019-11-06 11:32 | 2019-11-06 11:58 | 36FS+1d | 0d | Charles Hildebrant; David Pajak; Jeremy Robinson; JoAnne Sudderth; Nina Stevens; Sagar Mohan; Simaant Patil | 3h | 80.89 |
| 38 | 2.9 | **Executive Project Overview** | 5.23d | 2019-11-07 08:58 | 2019-11-12 11:06 |  | 0d |  | 3h | 27.5 |
| 39 | 2.9.1 | Present project overview to Mayor Ben Walsh | 0.1d | 2019-11-07 08:58 | 2019-11-07 09:28 | 37FS+1d | 0d | Simaant Patil; Ben Walsh | 1h | 22 |
| 40 | 2.9.2 | Present project overview to cityworks executives and community stakeholders | 0.13d | 2019-11-12 10:28 | 2019-11-12 11:06 | 39FS+5d | 0d | Simaant Patil [20%]; Christine Johnson; David K. Jaffe; Samuel T. Moore | 2h | 5.5 |
| 41 | 2.10 | **Formal Contract with Cityworks** | 0.1d | 2019-11-13 08:06 | 2019-11-13 08:36 |  | 0d |  | 3h | 22 |
| 42 | 2.10.1 | Meeting with Cityworks for project plan contract | 0.1d | 2019-11-13 08:06 | 2019-11-13 08:36 | 40FS+1d | 0d | Christine Johnson; David K. Jaffe; David Pajak; Samuel T. Moore; Simaant Patil; Jeremy Robinson | 3h | 22 |
| 43 | 3 | **Technical Training** | 0.44d | 2019-11-14 10:36 | 2019-11-14 13:49 |  | 0d |  | 20h | 5,132.78 |
| 44 | 3.1 | Technical training of City's IT staff | 0.44d | 2019-11-14 10:36 | 2019-11-14 13:49 | 42FS+2d | 0d | Charles Hildebrant; JoAnne Sudderth; Li-Min Wang; Mary Papero; Michelle McCarthy; Nina Stevens; Philip Grome; Sagar Mohan; Simaant Patil; Technical Training Fees [900%] | 20h | 5,132.78 |
| 45 | 4 | **Development of the Mobile App** | 221.61d | 2019-11-15 15:49 | 2020-06-03 10:53 |  | 0d |  | 833h | 16,956.17 |
| 46 | 4.1 | Analyze the current Cityworks software system | 0.43d | 2019-11-15 15:49 | 2019-11-18 08:57 | 44FS+2d | 0d | Charles Hildebrant; Christine Johnson; David K. Jaffe; JoAnne Sudderth; Philip Grome; Sagar Mohan; Samuel T. Moore | 15h | 310.71 |
| 47 | 4.2 | **Street Repair Issues Functionality of the App** | 63.79d | 2019-11-19 16:57 | 2020-01-20 15:55 |  | 0d |  | 200h | 4,230.85 |
| 48 | 4.2.1 | **Sprint 1** | 17.05d | 2019-11-19 16:57 | 2019-12-05 14:11 |  | 0d |  | 50h | 1,153.68 |
| 49 | 4.2.1.1 | **Design and develop database** | 9.73d | 2019-11-19 16:57 | 2019-11-29 08:37 |  | 0d |  | 40h | 982.29 |
| 50 | 4.2.1.1.1 | **Development of module for obtaining street repair issues from users** | 5.33d | 2019-11-19 16:57 | 2019-11-25 10:37 |  | 0d |  | 30h | 832.29 |
| 51 | 4.2.1.1.1.1 | Develop flow to connect module with different modules | 0.5d | 2019-11-19 16:57 | 2019-11-20 10:27 | 46FS+3d | 0d | Charles Hildebrant; Nina Stevens; Philip Grome; Sagar Mohan | 10h | 346.88 |
| 52 | 4.2.1.1.1.2 | Design method for accessing and storing user data | 0.33d | 2019-11-21 13:27 | 2019-11-21 15:07 | 51FS+2d | 0d | Charles Hildebrant; Nina Stevens; Philip Grome; Sagar Mohan; JoAnne Sudderth; Samuel Edelstein | 10h | 297.92 |
| 53 | 4.2.1.1.1.3 | Develop database to store and handle user data | 0.5d | 2019-11-25 08:07 | 2019-11-25 10:37 | 52FS+2d | 0d | Charles Hildebrant; JoAnne Sudderth; Li-Min Wang; Samuel Edelstein | 10h | 187.5 |

| ID | WBS | Task | Duration | Start | Finish | Predecessors | Total slack | Resources | Work | Cost |
| --- | --- | --- | --- | --- | --- | --- | --- | --- | --- | --- |
| 54 | 4.2.1.1.2 | **Connect to Cityworks software system** | 2.4d | 2019-11-26 13:37 | 2019-11-29 08:37 |  | 0d |  | 10h | 150 |
| 55 | 4.2.1.1.2.1 | Establish connection to the database of Cityworks | 0.2d | 2019-11-26 13:37 | 2019-11-26 14:37 | 53FS+2d | 0d | Charles Hildebrant; JoAnne Sudderth; Li-Min Wang; Samuel Edelstein; Samuel T. Moore | 5h | 75 |
| 56 | 4.2.1.1.2.2 | Update the database with new data | 0.2d | 2019-11-27 16:37 | 2019-11-29 08:37 | 55FS+2d | 0d | Charles Hildebrant; JoAnne Sudderth; Li-Min Wang; Samuel Edelstein; Samuel T. Moore | 5h | 75 |
| 57 | 4.2.1.2 | **Test the developed database module** | 2.25d | 2019-12-02 16:37 | 2019-12-04 10:51 |  | 0d |  | 8h | 131.72 |
| 58 | 4.2.1.2.1 | Test the functionality of the module | 0.12d | 2019-12-02 16:37 | 2019-12-03 08:13 | 56FS+3d | 0d | Charles Hildebrant; JoAnne Sudderth; Li-Min Wang; Samuel Edelstein; Samuel T. Moore | 3h | 45 |
| 59 | 4.2.1.2.2 | Security test of the module | 0.12d | 2019-12-04 10:13 | 2019-12-04 10:51 | 58FS+2d | 0d | Charles Hildebrant; JoAnne Sudderth; Li-Min Wang; Samuel Edelstein; Samuel T. Moore; David K. Jaffe; Mary Papero; Nina Stevens | 5h | 86.72 |
| 60 | 4.2.1.3 | Status Report 1 for Street Repair issues | 0.07d | 2019-12-05 13:51 | 2019-12-05 14:11 | 59FS+2d | 0d | Charles Hildebrant; David K. Jaffe; JoAnne Sudderth; Samuel T. Moore; City DPW Dept Mgr- Street Maint; Simaant Patil | 2h | 39.67 |
| 61 | 4.2.2 | **Sprint 2** | 14d | 2019-12-09 13:11 | 2019-12-20 10:10 |  | 0d |  | 50h | 1,209.79 |
| 62 | 4.2.2.1 | **Design and develop API** | 6.47d | 2019-12-09 13:11 | 2019-12-13 13:31 |  | 0d |  | 40h | 925 |
| 63 | 4.2.2.1.1 | **Development of API of module for obtaining street repair issues** | 3.87d | 2019-12-09 13:11 | 2019-12-11 16:31 |  | 0d |  | 28h | 700 |
| 64 | 4.2.2.1.1.1 | Develop flow for API to connect to database | 0.93d | 2019-12-09 13:11 | 2019-12-10 08:51 | 60FS+3d | 0d | Charles Hildebrant; JoAnne Sudderth; Li-Min Wang | 14h | 350 |
| 65 | 4.2.2.1.1.2 | Develop code for part of API of the module | 0.93d | 2019-12-11 10:51 | 2019-12-11 16:31 | 64FS+2d | 0d | Charles Hildebrant; JoAnne Sudderth; Li-Min Wang | 14h | 350 |
| 66 | 4.2.2.1.2 | **Connect to Cityworks software system** | 0.6d | 2019-12-13 09:31 | 2019-12-13 13:31 |  | 0d |  | 12h | 225 |
| 67 | 4.2.2.1.2.1 | Configure part of API to match with Cityworks software | 0.6d | 2019-12-13 09:31 | 2019-12-13 13:31 | 65FS+2d | 0d | Charles Hildebrant; JoAnne Sudderth; Li-Min Wang; Samuel T. Moore | 12h | 225 |
| 68 | 4.2.2.2 | **Test the developed module** | 2.45d | 2019-12-17 11:31 | 2019-12-18 16:46 |  | 0d |  | 8h | 237.19 |
| 69 | 4.2.2.2.1 | Test the functionality of the module with implementation | 0.25d | 2019-12-17 11:31 | 2019-12-17 13:46 | 67FS+3d | 0d | Charles Hildebrant; JoAnne Sudderth; Mary Papero; Nina Stevens | 5h | 173.44 |
| 70 | 4.2.2.2.2 | Security test of the integrated part of the module | 0.2d | 2019-12-18 15:46 | 2019-12-18 16:46 | 69FS+2d | 0d | David K. Jaffe; Mary Papero; Nina Stevens | 3h | 63.75 |
| 71 | 4.2.2.3 | Status Report 2 for Street Repair issues | 0.08d | 2019-12-20 09:46 | 2019-12-20 10:10 | 70FS+2d | 0d | Charles Hildebrant; David K. Jaffe; JoAnne Sudderth; City DPW Dept Mgr- Street Maint; Simaant Patil | 2h | 47.6 |
| 72 | 4.2.3 | **Sprint 3** | 11.9d | 2019-12-23 13:10 | 2020-01-06 16:41 |  | 0d |  | 50h | 1,188.28 |
| 73 | 4.2.3.1 | **Design and develop API** | 4.08d | 2019-12-23 13:10 | 2019-12-27 08:35 |  | 0d |  | 35h | 781.25 |
| 74 | 4.2.3.1.1 | **Development of API of module for obtaining street repair issues** | 1.33d | 2019-12-23 13:10 | 2019-12-24 10:50 |  | 0d |  | 20h | 500 |
| 75 | 4.2.3.1.1.1 | Develop code for left out part of API of the module | 1.33d | 2019-12-23 13:10 | 2019-12-24 10:50 | 71FS+2d | 0d | Charles Hildebrant; JoAnne Sudderth; Li-Min Wang | 20h | 500 |
| 76 | 4.2.3.1.2 | **Connect to Cityworks software system** | 0.75d | 2019-12-26 13:50 | 2019-12-27 08:35 |  | 0d |  | 15h | 281.25 |
| 77 | 4.2.3.1.2.1 | Configure the final API to match with Cityworks software | 0.75d | 2019-12-26 13:50 | 2019-12-27 08:35 | 75FS+2d | 0d | Charles Hildebrant; JoAnne Sudderth; Li-Min Wang; Samuel T. Moore | 15h | 281.25 |

| ID | WBS | Task | Duration | Start | Finish | Predecessors | Total slack | Resources | Work | Cost |
| --- | --- | --- | --- | --- | --- | --- | --- | --- | --- | --- |
| 78 | 4.2.3.2 | **Test the developed module** | 2.7d | 2019-12-30 16:35 | 2020-01-03 14:05 |  | 0d |  | 12h | 335.62 |
| 79 | 4.2.3.2.1 | Test the functionality of the API module with implementation | 0.3d | 2019-12-30 16:35 | 2020-01-02 09:05 | 77FS+3d | 0d | Charles Hildebrant; JoAnne Sudderth; Mary Papero; Nina Stevens | 6h | 208.12 |
| 80 | 4.2.3.2.2 | Security test of the final integrated part of the module with complete API | 0.4d | 2020-01-03 11:05 | 2020-01-03 14:05 | 79FS+2d | 0d | David K. Jaffe; Mary Papero; Nina Stevens | 6h | 127.5 |
| 81 | 4.2.3.3 | Status Report 3 for Street Repair issues | 0.12d | 2020-01-06 16:05 | 2020-01-06 16:41 | 80FS+2d | 0d | Charles Hildebrant; David K. Jaffe; JoAnne Sudderth; City DPW Dept Mgr- Street Maint; Simaant Patil | 3h | 71.4 |
| 82 | 4.2.4 | **Sprint 4** | 12.85d | 2020-01-08 15:41 | 2020-01-20 15:55 |  | 0d |  | 50h | 679.11 |
| 83 | 4.2.4.1 | **Design and develop frontend** | 6.33d | 2020-01-08 15:41 | 2020-01-14 15:21 |  | 0d |  | 35h | 408.33 |
| 84 | 4.2.4.1.1 | **Development of frontend for obtaining street repair issues from users** | 3.67d | 2020-01-08 15:41 | 2020-01-13 09:01 |  | 0d |  | 25h | 291.67 |
| 85 | 4.2.4.1.1.1 | Develop flow to connect module frontend with different modules | 0.67d | 2020-01-08 15:41 | 2020-01-09 10:01 | 81FS+3d | 0d | Charles Hildebrant; Christine Johnson; Li-Min Wang | 10h | 116.67 |
| 86 | 4.2.4.1.1.2 | Develop code for creating frontend of the the module | 1d | 2020-01-10 13:01 | 2020-01-13 09:01 | 85FS+2d | 0d | Charles Hildebrant; Christine Johnson; Li-Min Wang | 15h | 175 |
| 87 | 4.2.4.1.2 | **Connect to Cityworks software system** | 0.67d | 2020-01-14 11:01 | 2020-01-14 15:21 |  | 0d |  | 10h | 116.67 |
| 88 | 4.2.4.1.2.1 | Establish connection for similar configuration with software | 0.67d | 2020-01-14 11:01 | 2020-01-14 15:21 | 86FS+2d | 0d | Charles Hildebrant; Christine Johnson; Li-Min Wang | 10h | 116.67 |
| 89 | 4.2.4.2 | **Test the developed module** | 2.44d | 2020-01-16 08:21 | 2020-01-17 13:33 |  | 0d |  | 12h | 217.25 |
| 90 | 4.2.4.2.1 | Test the functionality of the of the frontend with software | 0.24d | 2020-01-16 08:21 | 2020-01-16 09:33 | 88FS+2d | 0d | Charles Hildebrant; Christine Johnson; Li-Min Wang; Mary Papero; Nina Stevens | 6h | 118.5 |
| 91 | 4.2.4.2.2 | Security test of the frontend module | 0.2d | 2020-01-17 11:33 | 2020-01-17 13:33 | 90FS+2d | 0d | Charles Hildebrant; Christine Johnson; Li-Min Wang; David K. Jaffe; Mary Papero; Nina Stevens | 6h | 98.75 |
| 92 | 4.2.4.3 | Status Report 4 for Street Repair issues | 0.07d | 2020-01-20 15:33 | 2020-01-20 15:55 | 91FS+2d | 0d | Charles Hildebrant; Christine Johnson; Li-Min Wang; David K. Jaffe; Mary Papero; Nina Stevens; City DPW Dept Mgr- Street Maint; Simaant Patil | 3h | 53.53 |
| 93 | 4.3 | **Streetlight Issues Functionality of the App** | 35.57d | 2020-01-22 08:55 | 2020-02-21 10:47 |  | 0d |  | 150h | 3,233.78 |
| 94 | 4.3.1 | **Sprint 1** | 10.26d | 2020-01-22 08:55 | 2020-01-30 13:14 |  | 0d |  | 50h | 1,134.93 |
| 95 | 4.3.1.1 | **Design and develop database** | 5.75d | 2020-01-22 08:55 | 2020-01-27 14:40 |  | 0d |  | 35h | 888.54 |
| 96 | 4.3.1.1.1 | **Development of module for obtaining streetlight issues information from users** | 3.08d | 2020-01-22 08:55 | 2020-01-24 08:20 |  | 0d |  | 25h | 738.54 |
| 97 | 4.3.1.1.1.1 | Develop flow to connect streelight module with different modules | 0.5d | 2020-01-22 08:55 | 2020-01-22 11:25 | 92FS+2d | 0d | Charles Hildebrant; Nina Stevens; Philip Grome; Sagar Mohan | 10h | 346.88 |
| 98 | 4.3.1.1.1.2 | Design method for accessing and storing user generated data | 0.33d | 2020-01-23 08:25 | 2020-01-23 10:05 | 97FS+1d | 0d | Charles Hildebrant; Nina Stevens; Philip Grome; Sagar Mohan; JoAnne Sudderth; Samuel Edelstein | 10h | 297.92 |
| 99 | 4.3.1.1.1.3 | Develop a database to store and handle user data for streelight | 0.25d | 2020-01-23 16:05 | 2020-01-24 08:20 | 98FS+1d | 0d | Charles Hildebrant; JoAnne Sudderth; Li-Min Wang; Samuel Edelstein | 5h | 93.75 |
| 100 | 4.3.1.1.2 | **Connect to Cityworks software system** | 0.67d | 2020-01-27 10:20 | 2020-01-27 14:40 |  | 0d |  | 10h | 150 |
| 101 | 4.3.1.1.2.1 | Establish connection to the database of Cityworks for handling streetlight issues | 0.67d | 2020-01-27 10:20 | 2020-01-27 14:40 | 99FS+2d | 0d | JoAnne Sudderth [60%]; Li-Min Wang [60%]; Samuel Edelstein [60%]; Samuel T. Moore [60%]; Charles Hildebrant [60%] | 10h | 150 |

| ID | WBS | Task | Duration | Start | Finish | Predecessors | Total slack | Resources | Work | Cost |
| --- | --- | --- | --- | --- | --- | --- | --- | --- | --- | --- |
| 102 | 4.3.1.2 | **Test the developed database module** | 1.45d | 2020-01-28 16:40 | 2020-01-29 15:54 |  | 0d |  | 13h | 206.72 |
| 103 | 4.3.1.2.1 | Test the functionality of the developed module to handle streetlight issues | 0.32d | 2020-01-28 16:40 | 2020-01-29 09:16 | 101FS+2d | 0d | Charles Hildebrant; JoAnne Sudderth; Li-Min Wang; Samuel Edelstein; Samuel T. Moore | 8h | 120 |
| 104 | 4.3.1.2.2 | Security test of the streetlight issues module | 0.12d | 2020-01-29 15:16 | 2020-01-29 15:54 | 103FS+1d | 0d | Charles Hildebrant; JoAnne Sudderth; Li-Min Wang; Samuel Edelstein; Samuel T. Moore; David K. Jaffe; Mary Papero; Nina Stevens | 5h | 86.72 |
| 105 | 4.3.1.3 | Status Report 1 for Streetlight issues | 0.07d | 2020-01-30 11:54 | 2020-01-30 13:14 | 104FS+1d | 0d | Charles Hildebrant; David K. Jaffe; JoAnne Sudderth; Samuel T. Moore; Simaant Patil; City DPW Dept Mgr- Streetlights | 2h | 39.67 |
| 106 | 4.3.2 | **Sprint 2** | 11.92d | 2020-01-31 15:14 | 2020-02-12 09:50 |  | 0d |  | 50h | 1,315.46 |
| 107 | 4.3.2.1 | **Design and develop API** | 5.25d | 2020-01-31 15:14 | 2020-02-06 08:29 |  | 0d |  | 20h | 468.75 |
| 108 | 4.3.2.1.1 | **Development of API of module for obtaining streetlight issues** | 3d | 2020-01-31 15:14 | 2020-02-04 14:14 |  | 0d |  | 15h | 375 |
| 109 | 4.3.2.1.1.1 | Develop flow for API to connect to database for streetlight issues | 0.67d | 2020-01-31 15:14 | 2020-02-03 09:34 | 105FS+2d | 0d | Charles Hildebrant; JoAnne Sudderth; Li-Min Wang | 10h | 250 |
| 110 | 4.3.2.1.1.2 | Develop code for part of API of the streetlight issues module | 0.33d | 2020-02-04 11:34 | 2020-02-04 14:14 | 109FS+2d | 0d | Charles Hildebrant; JoAnne Sudderth; Li-Min Wang | 5h | 125 |
| 111 | 4.3.2.1.2 | **Connect to Cityworks software system** | 0.25d | 2020-02-05 16:14 | 2020-02-06 08:29 |  | 0d |  | 5h | 93.75 |
| 112 | 4.3.2.1.2.1 | Configure streetlight issues part of API to match with Cityworks software | 0.25d | 2020-02-05 16:14 | 2020-02-06 08:29 | 110FS+2d | 0d | Charles Hildebrant; JoAnne Sudderth; Li-Min Wang; Samuel T. Moore | 5h | 93.75 |
| 113 | 4.3.2.2 | **Test the developed module** | 2.55d | 2020-02-07 10:29 | 2020-02-10 16:14 |  | 0d |  | 27h | 775.31 |
| 114 | 4.3.2.2.1 | Test the functionality of the module with implementation of API for streetlight issues | 0.75d | 2020-02-07 10:29 | 2020-02-07 15:14 | 112FS+2d | 0d | Charles Hildebrant; JoAnne Sudderth; Mary Papero; Nina Stevens | 15h | 520.31 |
| 115 | 4.3.2.2.2 | Security test of the integrated part of the streetlight issues module | 0.8d | 2020-02-10 11:14 | 2020-02-10 16:14 | 114FS+1d | 0d | David K. Jaffe; Mary Papero; Nina Stevens | 12h | 255 |
| 116 | 4.3.2.3 | Status Report 2 for Streetlight issues | 0.12d | 2020-02-12 09:14 | 2020-02-12 09:50 | 115FS+2d | 0d | Charles Hildebrant; David K. Jaffe; JoAnne Sudderth; Simaant Patil; City DPW Dept Mgr- Streetlights | 3h | 71.4 |
| 117 | 4.3.3 | **Sprint 3** | 9.39d | 2020-02-13 11:50 | 2020-02-21 10:47 |  | 0d |  | 50h | 783.39 |
| 118 | 4.3.3.1 | **Design and develop frontend** | 5.33d | 2020-02-13 11:50 | 2020-02-18 15:30 |  | 0d |  | 20h | 233.33 |
| 119 | 4.3.3.1.1 | **Development of frontend for obtaining streetlight issues from users** | 3d | 2020-02-13 11:50 | 2020-02-17 10:50 |  | 0d |  | 15h | 175 |
| 120 | 4.3.3.1.1.1 | Develop flow to connect streelight issues module frontend with different modules | 0.67d | 2020-02-13 11:50 | 2020-02-13 16:10 | 116FS+2d | 0d | Charles Hildebrant; Christine Johnson; Li-Min Wang | 10h | 116.67 |
| 121 | 4.3.3.1.1.2 | Develop code for creating frontend of the the streetlight issues module | 0.33d | 2020-02-17 09:10 | 2020-02-17 10:50 | 120FS+2d | 0d | Charles Hildebrant; Christine Johnson; Li-Min Wang | 5h | 58.33 |
| 122 | 4.3.3.1.2 | **Connect to Cityworks software system** | 0.33d | 2020-02-18 13:50 | 2020-02-18 15:30 |  | 0d |  | 5h | 58.33 |
| 123 | 4.3.3.1.2.1 | Establish connection of the streetlight issues for similar configuration with software | 0.33d | 2020-02-18 13:50 | 2020-02-18 15:30 | 121FS+2d | 0d | Charles Hildebrant; Christine Johnson; Li-Min Wang | 5h | 58.33 |
| 124 | 4.3.3.2 | **Test the developed module** | 1.93d | 2020-02-19 11:30 | 2020-02-20 14:10 |  | 0d |  | 25h | 460.83 |
| 125 | 4.3.3.2.1 | Test the functionality of the of the streetlight issues frontend with software | 0.6d | 2020-02-19 11:30 | 2020-02-19 15:30 | 123FS+1d | 0d | Charles Hildebrant; Li-Min Wang; Christine Johnson; Mary Papero; Nina Stevens | 15h | 296.25 |
| 126 | 4.3.3.2.2 | Security test of the streetlight issues frontend module | 0.33d | 2020-02-20 11:30 | 2020-02-20 14:10 | 125FS+1d | 0d | Charles Hildebrant; Christine Johnson; Li-Min Wang; David K. Jaffe; Mary Papero; Nina Stevens | 10h | 164.58 |
| 127 | 4.3.3.3 | Status Report 3 for Streetlight Issues | 0.12d | 2020-02-21 10:10 | 2020-02-21 10:47 | 126FS+1d | 0d | Charles Hildebrant; Christine Johnson; Li-Min Wang; David K. Jaffe; Mary Papero; Nina Stevens; Simaant Patil; City DPW Dept Mgr- Streetlights | 5h | 89.22 |

| ID | WBS | Task | Duration | Start | Finish | Predecessors | Total slack | Resources | Work | Cost |
| --- | --- | --- | --- | --- | --- | --- | --- | --- | --- | --- |
| 128 | 4.4 | **Traffic Signal/Signage Issues Functionality of the App** | 34.36d | 2020-02-24 13:47 | 2020-03-25 08:36 |  | 0d |  | 150h | 3,217.11 |
| 129 | 4.4.1 | **Sprint 1** | 9.07d | 2020-02-24 13:47 | 2020-03-03 10:09 |  | 0d |  | 50h | 1,130.17 |
| 130 | 4.4.1.1 | **Design and develop database for Traffic Signal/Signage Issues** | 5.56d | 2020-02-24 13:47 | 2020-02-28 08:35 |  | 0d |  | 35h | 883.78 |
| 131 | 4.4.1.1.1 | **Development of module to obtain Traffic Signal/Signage information** | 4.08d | 2020-02-24 13:47 | 2020-02-27 09:12 |  | 0d |  | 25h | 738.54 |
| 132 | 4.4.1.1.1.1 | Develop flow to connect traffic signal/signage module with different modules | 0.5d | 2020-02-24 13:47 | 2020-02-24 16:17 | 127FS+2d | 0d | Charles Hildebrant; Nina Stevens; Philip Grome; Sagar Mohan | 10h | 346.88 |
| 133 | 4.4.1.1.1.2 | Design method for accessing and storing user data through traffic signal/ signage issues | 0.33d | 2020-02-26 09:17 | 2020-02-26 10:57 | 132FS+2d | 0d | Charles Hildebrant; Nina Stevens; Philip Grome; Sagar Mohan; JoAnne Sudderth; Samuel Edelstein | 10h | 297.92 |
| 134 | 4.4.1.1.1.3 | Develop a database to store and handle user data of traffic signal/signage issues | 0.25d | 2020-02-26 16:57 | 2020-02-27 09:12 | 133FS+1d | 0d | Charles Hildebrant; JoAnne Sudderth; Li-Min Wang; Samuel Edelstein | 5h | 93.75 |
| 135 | 4.4.1.1.2 | **Connect to Cityworks software system** | 0.48d | 2020-02-27 15:12 | 2020-02-28 08:35 |  | 0d |  | 10h | 145.24 |
| 136 | 4.4.1.1.2.1 | Establish connection to Cityworks database for handling traffic signal/signage issues | 0.48d | 2020-02-27 15:12 | 2020-02-28 08:35 | 134FS+1d | 0d | Li-Min Wang; Charles Hildebrant; JoAnne Sudderth; Samuel Edelstein; Samuel T. Moore | 10h | 145.24 |
| 137 | 4.4.1.2 | **Test the developed database module** | 1.45d | 2020-02-28 14:35 | 2020-03-02 13:49 |  | 0d |  | 13h | 206.72 |
| 138 | 4.4.1.2.1 | Test the functionality of the developed module to handle traffic signal/ signage issues | 0.32d | 2020-02-28 14:35 | 2020-02-28 16:11 | 136FS+1d | 0d | Charles Hildebrant; JoAnne Sudderth; Li-Min Wang; Samuel Edelstein; Samuel T. Moore | 8h | 120 |
| 139 | 4.4.1.2.2 | Security test of the traffic signal/sigange issues module | 0.12d | 2020-03-02 13:11 | 2020-03-02 13:49 | 138FS+1d | 0d | Charles Hildebrant; JoAnne Sudderth; Li-Min Wang; Samuel Edelstein; Samuel T. Moore; David K. Jaffe; Mary Papero; Nina Stevens | 5h | 86.72 |
| 140 | 4.4.1.3 | Status Report 1 for traffic signal/signage issues | 0.07d | 2020-03-03 09:49 | 2020-03-03 10:09 | 139FS+1d | 0d | Charles Hildebrant; David K. Jaffe; JoAnne Sudderth; Samuel T. Moore; Simaant Patil; City DPW Dept Mgr- Traffic Signal and Signage | 2h | 39.67 |
| 141 | 4.4.2 | **Sprint 2** | 11.9d | 2020-03-03 16:09 | 2020-03-13 10:39 |  | 0d |  | 50h | 1,303.56 |
| 142 | 4.4.2.1 | **Design and develop API** | 5.25d | 2020-03-03 16:09 | 2020-03-09 09:24 |  | 0d |  | 20h | 468.75 |
| 143 | 4.4.2.1.1 | **Development of API of module for obtaining traffic signal/signage issues** | 3d | 2020-03-03 16:09 | 2020-03-05 15:09 |  | 0d |  | 15h | 375 |
| 144 | 4.4.2.1.1.1 | Develop flow for API to connect to database for traffic signal/signage issues | 0.67d | 2020-03-03 16:09 | 2020-03-04 10:29 | 140FS+1d | 0d | Charles Hildebrant; JoAnne Sudderth; Li-Min Wang | 10h | 250 |
| 145 | 4.4.2.1.1.2 | Develop code for part of API of the traffic signal/ signage issues module | 0.33d | 2020-03-05 13:29 | 2020-03-05 15:09 | 144FS+2d | 0d | Charles Hildebrant; JoAnne Sudderth; Li-Min Wang | 5h | 125 |
| 146 | 4.4.2.1.2 | **Connect to Cityworks software system** | 0.25d | 2020-03-09 08:09 | 2020-03-09 09:24 |  | 0d |  | 5h | 93.75 |
| 147 | 4.4.2.1.2.1 | Configure traffic signal/signage issues part of API to match with Cityworks software | 0.25d | 2020-03-09 08:09 | 2020-03-09 09:24 | 145FS+2d | 0d | Charles Hildebrant; JoAnne Sudderth; Li-Min Wang; Samuel T. Moore | 5h | 93.75 |
| 148 | 4.4.2.2 | **Test the developed module** | 2.55d | 2020-03-10 11:24 | 2020-03-12 08:09 |  | 0d |  | 27h | 775.31 |
| 149 | 4.4.2.2.1 | Test the functionality of the module with implementation of API for traffic signal/ signage issues | 0.75d | 2020-03-10 11:24 | 2020-03-10 16:09 | 147FS+2d | 0d | Charles Hildebrant; JoAnne Sudderth; Mary Papero; Nina Stevens | 15h | 520.31 |
| 150 | 4.4.2.2.2 | Security test of the integrated part of the traffic signal/ signage issues module | 0.8d | 2020-03-11 13:09 | 2020-03-12 08:09 | 149FS+1d | 0d | David K. Jaffe; Mary Papero; Nina Stevens | 12h | 255 |
| 151 | 4.4.2.3 | Status Report 2 for traffic signal/ signage issues | 0.1d | 2020-03-13 10:09 | 2020-03-13 10:39 | 150FS+2d | 0d | Charles Hildebrant; David K. Jaffe; JoAnne Sudderth; Simaant Patil; City DPW Dept Mgr- Traffic Signal and Signage; Jeremy Robinson | 3h | 59.5 |

| ID | WBS | Task | Duration | Start | Finish | Predecessors | Total slack | Resources | Work | Cost |
| --- | --- | --- | --- | --- | --- | --- | --- | --- | --- | --- |
| 152 | 4.4.3 | **Sprint 3** | 11.39d | 2020-03-13 16:39 | 2020-03-25 08:36 |  | 0d |  | 50h | 783.39 |
| 153 | 4.4.3.1 | **Design and develop frontend** | 5.33d | 2020-03-13 16:39 | 2020-03-19 10:19 |  | 0d |  | 20h | 233.33 |
| 154 | 4.4.3.1.1 | **Development of frontend for obtaining traffic signal/ signage issues from users** | 3d | 2020-03-13 16:39 | 2020-03-17 15:39 |  | 0d |  | 15h | 175 |
| 155 | 4.4.3.1.1.1 | Develop flow to connect traffic signal/signage issues module frontend with different modules | 0.67d | 2020-03-13 16:39 | 2020-03-16 10:59 | 151FS+1d | 0d | Charles Hildebrant; Christine Johnson; Li-Min Wang | 10h | 116.67 |
| 156 | 4.4.3.1.1.2 | Develop code for creating frontend of the the traffic signal/signage issues module | 0.33d | 2020-03-17 13:59 | 2020-03-17 15:39 | 155FS+2d | 0d | Charles Hildebrant; Christine Johnson; Li-Min Wang | 5h | 58.33 |
| 157 | 4.4.3.1.2 | **Connect to Cityworks software system** | 0.33d | 2020-03-19 08:39 | 2020-03-19 10:19 |  | 0d |  | 5h | 58.33 |
| 158 | 4.4.3.1.2.1 | Establish connection of the traffic signal/signage issues for similar configuration with software | 0.33d | 2020-03-19 08:39 | 2020-03-19 10:19 | 156FS+2d | 0d | Charles Hildebrant; Christine Johnson; Li-Min Wang | 5h | 58.33 |
| 159 | 4.4.3.2 | **Test the developed module** | 2.93d | 2020-03-20 13:19 | 2020-03-24 10:59 |  | 0d |  | 25h | 460.83 |
| 160 | 4.4.3.2.1 | Test the functionality of the of the traffic signal/signage issues frontend with software | 0.6d | 2020-03-20 13:19 | 2020-03-20 16:19 | 158FS+2d | 0d | Charles Hildebrant; Li-Min Wang; Christine Johnson; Mary Papero; Nina Stevens | 15h | 296.25 |
| 161 | 4.4.3.2.2 | Security test of the traffic signal/signage issues frontend module | 0.33d | 2020-03-24 09:19 | 2020-03-24 10:59 | 160FS+2d | 0d | Charles Hildebrant; Christine Johnson; Li-Min Wang; David K. Jaffe; Mary Papero; Nina Stevens | 10h | 164.58 |
| 162 | 4.4.3.3 | Status Report 3 for traffic signal/ signage Issues | 0.12d | 2020-03-24 16:59 | 2020-03-25 08:36 | 161FS+1d | 0d | Charles Hildebrant; Christine Johnson; Li-Min Wang; David K. Jaffe; Mary Papero; Nina Stevens; Simaant Patil; City DPW Dept Mgr- Traffic Signal and Signage | 5h | 89.22 |
| 163 | 4.5 | **Trash Pickup Issues Functionality of the App** | 25.39d | 2020-03-26 10:36 | 2020-04-17 09:32 |  | 0d |  | 100h | 1,926.93 |
| 164 | 4.5.1 | **Sprint 1** | 11.93d | 2020-03-26 10:36 | 2020-04-06 15:14 |  | 0d |  | 50h | 1,022.29 |
| 165 | 4.5.1.1 | **Design and develop database for Trash Pickup Issues** | 7.11d | 2020-03-26 10:36 | 2020-04-01 15:09 |  | 0d |  | 25h | 599.69 |
| 166 | 4.5.1.1.1 | **Development of module to obtain Trash Pickup information** | 4.95d | 2020-03-26 10:36 | 2020-03-31 11:21 |  | 0d |  | 21h | 539.69 |
| 167 | 4.5.1.1.1.1 | Develop flow to connect trash pickup module with different modules | 0.25d | 2020-03-26 10:36 | 2020-03-26 11:51 | 162FS+2d | 0d | Charles Hildebrant; Nina Stevens; Philip Grome; Sagar Mohan | 5h | 173.44 |
| 168 | 4.5.1.1.1.2 | Design method for accessing and storing user data through trash pickup issues | 0.2d | 2020-03-27 14:51 | 2020-03-27 15:51 | 167FS+2d | 0d | Charles Hildebrant; Nina Stevens; Philip Grome; Sagar Mohan; JoAnne Sudderth; Samuel Edelstein | 6h | 178.75 |
| 169 | 4.5.1.1.1.3 | Develop a database to store and handle user data of trash pickup issues | 0.5d | 2020-03-31 08:51 | 2020-03-31 11:21 | 168FS+2d | 0d | Charles Hildebrant; JoAnne Sudderth; Li-Min Wang; Samuel Edelstein | 10h | 187.5 |
| 170 | 4.5.1.1.2 | **Connect to Cityworks software system** | 0.16d | 2020-04-01 14:21 | 2020-04-01 15:09 |  | 0d |  | 4h | 60 |
| 171 | 4.5.1.1.2.1 | Establish connection to Cityworks database for handling trash pickup issues | 0.16d | 2020-04-01 14:21 | 2020-04-01 15:09 | 169FS+2d | 0d | Li-Min Wang; Charles Hildebrant; JoAnne Sudderth; Samuel Edelstein; Samuel T. Moore | 4h | 60 |
| 172 | 4.5.1.2 | **Test the developed database module** | 1.65d | 2020-04-02 11:09 | 2020-04-03 11:24 |  | 0d |  | 20h | 323.44 |
| 173 | 4.5.1.2.1 | Test the functionality of the developed module to handle trash pickup issues | 0.4d | 2020-04-02 11:09 | 2020-04-02 14:09 | 171FS+1d | 0d | Charles Hildebrant; JoAnne Sudderth; Li-Min Wang; Samuel Edelstein; Samuel T. Moore | 10h | 150 |
| 174 | 4.5.1.2.2 | Security test of the trash pickup issues module | 0.25d | 2020-04-03 10:09 | 2020-04-03 11:24 | 173FS+1d | 0d | Charles Hildebrant; JoAnne Sudderth; Li-Min Wang; Samuel Edelstein; Samuel T. Moore; David K. Jaffe; Mary Papero; Nina Stevens | 10h | 173.44 |
| 175 | 4.5.1.3 | Status Report 1 for trash pickup issues | 0.17d | 2020-04-06 14:24 | 2020-04-06 15:14 | 174FS+2d | 0d | Charles Hildebrant; David K. Jaffe; JoAnne Sudderth; Samuel T. Moore; Simaant Patil; City DPW Dept Mgr- Trash Pickup | 5h | 99.17 |

| ID | WBS | Task | Duration | Start | Finish | Predecessors | Total slack | Resources | Work | Cost |
| --- | --- | --- | --- | --- | --- | --- | --- | --- | --- | --- |
| 176 | 4.5.2 | **Sprint 2** | 11.46d | 2020-04-08 08:14 | 2020-04-17 09:32 |  | 0d |  | 50h | 904.64 |
| 177 | 4.5.2.1 | **Design and develop API and frontend** | 6.6d | 2020-04-08 08:14 | 2020-04-14 09:14 |  | 0d |  | 25h | 453.33 |
| 178 | 4.5.2.1.1 | **Development of API and frontend of module for obtaining trash pickup issues** | 4.13d | 2020-04-08 08:14 | 2020-04-10 13:54 |  | 0d |  | 17h | 331.67 |
| 179 | 4.5.2.1.1.1 | Develop flow for API to connect to database for trash pickup issues | 0.2d | 2020-04-08 08:14 | 2020-04-08 09:14 | 175FS+2d | 0d | Charles Hildebrant; JoAnne Sudderth; Li-Min Wang | 3h | 75 |
| 180 | 4.5.2.1.1.2 | Develop code for part of API of the trash pickup issues module | 0.47d | 2020-04-09 11:14 | 2020-04-09 14:34 | 179FS+2d | 0d | Charles Hildebrant; JoAnne Sudderth; Li-Min Wang | 7h | 175 |
| 181 | 4.5.2.1.1.3 | Develop code for frontend for trash pickup issues part of the module | 0.47d | 2020-04-10 10:34 | 2020-04-10 13:54 | 180FS+1d | 0d | Charles Hildebrant; Christine Johnson; Li-Min Wang | 7h | 81.67 |
| 182 | 4.5.2.1.2 | **Connect to Cityworks software system** | 1.47d | 2020-04-13 09:54 | 2020-04-14 09:14 |  | 0d |  | 8h | 121.67 |
| 183 | 4.5.2.1.2.1 | Configure trash pickup issues part of API to match with Cityworks software | 0.2d | 2020-04-13 09:54 | 2020-04-13 10:54 | 181FS+1d | 0d | Charles Hildebrant; JoAnne Sudderth; Li-Min Wang; Samuel T. Moore | 4h | 75 |
| 184 | 4.5.2.1.2.2 | Configure frontend part of the trash pickup issues with the software | 0.27d | 2020-04-13 16:54 | 2020-04-14 09:14 | 183FS+1d | 0d | Charles Hildebrant; Christine Johnson; Li-Min Wang | 4h | 46.67 |
| 185 | 4.5.2.2 | **Test the developed module** | 2.73d | 2020-04-14 15:14 | 2020-04-16 11:54 |  | 0d |  | 20h | 362.08 |
| 186 | 4.5.2.2.1 | Test the functionality of the module with implementation of API for trash pickup issues | 0.4d | 2020-04-14 15:14 | 2020-04-15 08:14 | 184FS+1d | 0d | Charles Hildebrant; Li-Min Wang; Christine Johnson; Mary Papero; Nina Stevens | 10h | 197.5 |
| 187 | 4.5.2.2.2 | Security test of the integrated part of the trash pickup issues module | 0.33d | 2020-04-16 10:14 | 2020-04-16 11:54 | 186FS+2d | 0d | Charles Hildebrant; Christine Johnson; Li-Min Wang; David K. Jaffe; Mary Papero; Nina Stevens | 10h | 164.58 |
| 188 | 4.5.2.3 | Status Report 2 for trash pickup issues | 0.12d | 2020-04-17 08:54 | 2020-04-17 09:32 | 187FS+1d | 0d | Charles Hildebrant; Christine Johnson; Li-Min Wang; David K. Jaffe; Mary Papero; Nina Stevens; Simaant Patil; City DPW Dept Mgr- Trash Pickup | 5h | 89.22 |
| 189 | 4.6 | **Park Maintenance Issues Functionality of the App** | 22.39d | 2020-04-20 11:32 | 2020-05-08 11:27 |  | 0d |  | 100h | 1,926.93 |
| 190 | 4.6.1 | **Sprint 1** | 10.93d | 2020-04-20 11:32 | 2020-04-29 10:10 |  | 0d |  | 50h | 1,022.29 |
| 191 | 4.6.1.1 | **Design and develop database for Park Maintenance Issues** | 6.11d | 2020-04-20 11:32 | 2020-04-24 10:05 |  | 0d |  | 25h | 599.69 |
| 192 | 4.6.1.1.1 | **Development of module to obtain Park Maintennace information** | 3.95d | 2020-04-20 11:32 | 2020-04-22 16:17 |  | 0d |  | 21h | 539.69 |
| 193 | 4.6.1.1.1.1 | Develop flow to connect park maintenance module with different modules | 0.25d | 2020-04-20 11:32 | 2020-04-20 13:47 | 188FS+2d | 0d | Charles Hildebrant; Nina Stevens; Philip Grome; Sagar Mohan | 5h | 173.44 |
| 194 | 4.6.1.1.1.2 | Design method for accessing and storing user data through park maintenance issues | 0.2d | 2020-04-21 15:47 | 2020-04-21 16:47 | 193FS+2d | 0d | Charles Hildebrant; Nina Stevens; Philip Grome; Sagar Mohan; JoAnne Sudderth; Samuel Edelstein | 6h | 178.75 |
| 195 | 4.6.1.1.1.3 | Develop a database to store and handle user data of park maintenance issues | 0.5d | 2020-04-22 13:47 | 2020-04-22 16:17 | 194FS+1d | 0d | Charles Hildebrant; JoAnne Sudderth; Li-Min Wang; Samuel Edelstein | 10h | 187.5 |
| 196 | 4.6.1.1.2 | **Connect to Cityworks software system** | 0.16d | 2020-04-24 09:17 | 2020-04-24 10:05 |  | 0d |  | 4h | 60 |
| 197 | 4.6.1.1.2.1 | Establish connection to Cityworks database for handling park maintenance issues | 0.16d | 2020-04-24 09:17 | 2020-04-24 10:05 | 195FS+2d | 0d | Li-Min Wang; Charles Hildebrant; JoAnne Sudderth; Samuel Edelstein; Samuel T. Moore | 4h | 60 |
| 198 | 4.6.1.2 | **Test the developed database module** | 2.65d | 2020-04-24 16:05 | 2020-04-28 13:20 |  | 0d |  | 20h | 323.44 |
| 199 | 4.6.1.2.1 | Test the functionality of the developed module to handle park maintenance issues | 0.4d | 2020-04-24 16:05 | 2020-04-27 09:05 | 197FS+1d | 0d | Charles Hildebrant; JoAnne Sudderth; Li-Min Wang; Samuel Edelstein; Samuel T. Moore | 10h | 150 |
| 200 | 4.6.1.2.2 | Security test of the park maintenance issues module | 0.25d | 2020-04-28 11:05 | 2020-04-28 13:20 | 199FS+2d | 0d | Charles Hildebrant; JoAnne Sudderth; Li-Min Wang; Samuel Edelstein; Samuel T. Moore; David K. Jaffe; Mary Papero; Nina Stevens | 10h | 173.44 |
| 201 | 4.6.1.3 | Status Report 1 for park maintenance issues | 0.17d | 2020-04-29 09:20 | 2020-04-29 10:10 | 200FS+1d | 0d | Charles Hildebrant; David K. Jaffe; JoAnne Sudderth; Samuel T. Moore; Simaant Patil; City DPW Dept Mgr- Parks Maintenance | 5h | 99.17 |

| ID | WBS | Task | Duration | Start | Finish | Predecessors | Total slack | Resources | Work | Cost |
| --- | --- | --- | --- | --- | --- | --- | --- | --- | --- | --- |
| 202 | 4.6.2 | **Sprint 2** | 10.46d | 2020-04-29 16:10 | 2020-05-08 11:27 |  | 0d |  | 50h | 904.64 |
| 203 | 4.6.2.1 | **Design and develop API and frontend** | 6.6d | 2020-04-29 16:10 | 2020-05-06 08:10 |  | 0d |  | 25h | 453.33 |
| 204 | 4.6.2.1.1 | **Development of API and frontend of module for obtaining park maintenance issues** | 4.13d | 2020-04-29 16:10 | 2020-05-04 11:50 |  | 0d |  | 17h | 331.67 |
| 205 | 4.6.2.1.1.1 | Develop flow for API to connect to database for park maintenance issues | 0.2d | 2020-04-29 16:10 | 2020-04-30 08:10 | 201FS+1d | 0d | Charles Hildebrant; JoAnne Sudderth; Li-Min Wang | 3h | 75 |
| 206 | 4.6.2.1.1.2 | Develop code for part of API of the park maintenance issues module | 0.47d | 2020-05-01 10:10 | 2020-05-01 13:30 | 205FS+2d | 0d | Charles Hildebrant; JoAnne Sudderth; Li-Min Wang | 7h | 175 |
| 207 | 4.6.2.1.1.3 | Develop code for frontend for park maintenance issues part of the module | 0.47d | 2020-05-04 09:30 | 2020-05-04 11:50 | 206FS+1d | 0d | Charles Hildebrant; Christine Johnson; Li-Min Wang | 7h | 81.67 |
| 208 | 4.6.2.1.2 | **Connect to Cityworks software system** | 1.47d | 2020-05-05 08:50 | 2020-05-06 08:10 |  | 0d |  | 8h | 121.67 |
| 209 | 4.6.2.1.2.1 | Configure park maintenance issues part of API to match with Cityworks software | 0.2d | 2020-05-05 08:50 | 2020-05-05 09:50 | 207FS+1d | 0d | Charles Hildebrant; JoAnne Sudderth; Li-Min Wang; Samuel T. Moore | 4h | 75 |
| 210 | 4.6.2.1.2.2 | Configure frontend part of the park maintenance issues with the software | 0.27d | 2020-05-05 15:50 | 2020-05-06 08:10 | 209FS+1d | 0d | Charles Hildebrant; Christine Johnson; Li-Min Wang | 4h | 46.67 |
| 211 | 4.6.2.2 | **Test the developed module** | 1.73d | 2020-05-06 14:10 | 2020-05-07 14:50 |  | 0d |  | 20h | 362.08 |
| 212 | 4.6.2.2.1 | Test the functionality of the module with implementation of API for park maintenance issues | 0.4d | 2020-05-06 14:10 | 2020-05-06 16:10 | 210FS+1d | 0d | Charles Hildebrant; Li-Min Wang; Christine Johnson; Mary Papero; Nina Stevens | 10h | 197.5 |
| 213 | 4.6.2.2.2 | Security test of the integrated part of the park maintenance issues module | 0.33d | 2020-05-07 13:10 | 2020-05-07 14:50 | 212FS+1d | 0d | Charles Hildebrant; Christine Johnson; Li-Min Wang; David K. Jaffe; Mary Papero; Nina Stevens | 10h | 164.58 |
| 214 | 4.6.2.3 | Status Report 2 for park maintenance issues | 0.12d | 2020-05-08 10:50 | 2020-05-08 11:27 | 213FS+1d | 0d | Charles Hildebrant; Christine Johnson; Li-Min Wang; David K. Jaffe; Mary Papero; Nina Stevens; Simaant Patil; City DPW Dept Mgr- Parks Maintenance | 5h | 89.22 |
| 215 | 4.7 | **Snow Plowing Issues Functionality of the App** | 20.39d | 2020-05-11 14:27 | 2020-05-28 11:23 |  | 0d |  | 100h | 1,926.93 |
| 216 | 4.7.1 | **Sprint 1** | 8.93d | 2020-05-11 14:27 | 2020-05-19 10:05 |  | 0d |  | 50h | 1,022.29 |
| 217 | 4.7.1.1 | **Design and develop database for Snow Plowing Issues** | 4.11d | 2020-05-11 14:27 | 2020-05-14 10:00 |  | 0d |  | 25h | 599.69 |
| 218 | 4.7.1.1.1 | **Development of module to obtain Snow Plowing information** | 2.95d | 2020-05-11 14:27 | 2020-05-13 13:12 |  | 0d |  | 21h | 539.69 |
| 219 | 4.7.1.1.1.1 | Develop flow to connect snow plowing module with different modules | 0.25d | 2020-05-11 14:27 | 2020-05-11 15:42 | 214FS+2d | 0d | Charles Hildebrant; Nina Stevens; Philip Grome; Sagar Mohan | 5h | 173.44 |
| 220 | 4.7.1.1.1.2 | Design method for accessing and storing user data through snow plowing issues | 0.2d | 2020-05-12 11:42 | 2020-05-12 13:42 | 219FS+1d | 0d | Charles Hildebrant; Nina Stevens; Philip Grome; Sagar Mohan; JoAnne Sudderth; Samuel Edelstein | 6h | 178.75 |
| 221 | 4.7.1.1.1.3 | Develop a database to store and handle user data of snow plowing issues | 0.5d | 2020-05-13 09:42 | 2020-05-13 13:12 | 220FS+1d | 0d | Charles Hildebrant; JoAnne Sudderth; Li-Min Wang; Samuel Edelstein | 10h | 187.5 |
| 222 | 4.7.1.1.2 | **Connect to Cityworks software system** | 0.16d | 2020-05-14 09:12 | 2020-05-14 10:00 |  | 0d |  | 4h | 60 |
| 223 | 4.7.1.1.2.1 | Establish connection to Cityworks database for handling snow plowing issues | 0.16d | 2020-05-14 09:12 | 2020-05-14 10:00 | 221FS+1d | 0d | Li-Min Wang; Charles Hildebrant; JoAnne Sudderth; Samuel Edelstein; Samuel T. Moore | 4h | 60 |
| 224 | 4.7.1.2 | **Test the developed database module** | 1.65d | 2020-05-14 16:00 | 2020-05-15 16:15 |  | 0d |  | 20h | 323.44 |
| 225 | 4.7.1.2.1 | Test the functionality of the developed module to handle snow plowing issues | 0.4d | 2020-05-14 16:00 | 2020-05-15 09:00 | 223FS+1d | 0d | Charles Hildebrant; JoAnne Sudderth; Li-Min Wang; Samuel Edelstein; Samuel T. Moore | 10h | 150 |
| 226 | 4.7.1.2.2 | Security test of the snow plowing issues module | 0.25d | 2020-05-15 15:00 | 2020-05-15 16:15 | 225FS+1d | 0d | Charles Hildebrant; JoAnne Sudderth; Li-Min Wang; Samuel Edelstein; Samuel T. Moore; David K. Jaffe; Mary Papero; Nina Stevens | 10h | 173.44 |
| 227 | 4.7.1.3 | Status Report 1 for snow plowing issues | 0.17d | 2020-05-19 09:15 | 2020-05-19 10:05 | 226FS+2d | 0d | Charles Hildebrant; David K. Jaffe; JoAnne Sudderth; Samuel T. Moore; Simaant Patil; City DPW Dept Mgr- Snow Plowing | 5h | 99.17 |

| ID | WBS | Task | Duration | Start | Finish | Predecessors | Total slack | Resources | Work | Cost |
| --- | --- | --- | --- | --- | --- | --- | --- | --- | --- | --- |
| 228 | 4.7.2 | **Sprint 2** | 10.46d | 2020-05-19 16:05 | 2020-05-28 11:23 |  | 0d |  | 50h | 904.64 |
| 229 | 4.7.2.1 | **Design and develop API and frontend** | 6.6d | 2020-05-19 16:05 | 2020-05-26 08:05 |  | 0d |  | 25h | 453.33 |
| 230 | 4.7.2.1.1 | **Development of API and frontend of module for obtaining snow plowing issues** | 4.13d | 2020-05-19 16:05 | 2020-05-22 11:45 |  | 0d |  | 17h | 331.67 |
| 231 | 4.7.2.1.1.1 | Develop flow for API to connect to database for snow plowing issues | 0.2d | 2020-05-19 16:05 | 2020-05-20 08:05 | 227FS+1d | 0d | Charles Hildebrant; JoAnne Sudderth; Li-Min Wang | 3h | 75 |
| 232 | 4.7.2.1.1.2 | Develop code for part of API of the snow plowing issues module | 0.47d | 2020-05-21 10:05 | 2020-05-21 13:25 | 231FS+2d | 0d | Charles Hildebrant; JoAnne Sudderth; Li-Min Wang | 7h | 175 |
| 233 | 4.7.2.1.1.3 | Develop code for frontend for snow plowing issues part of the module | 0.47d | 2020-05-22 09:25 | 2020-05-22 11:45 | 232FS+1d | 0d | Charles Hildebrant; Christine Johnson; Li-Min Wang | 7h | 81.67 |
| 234 | 4.7.2.1.2 | **Connect to Cityworks software system** | 1.47d | 2020-05-25 08:45 | 2020-05-26 08:05 |  | 0d |  | 8h | 121.67 |
| 235 | 4.7.2.1.2.1 | Configure snow plowing issues part of API to match with Cityworks software | 0.2d | 2020-05-25 08:45 | 2020-05-25 09:45 | 233FS+1d | 0d | Charles Hildebrant; JoAnne Sudderth; Li-Min Wang; Samuel T. Moore | 4h | 75 |
| 236 | 4.7.2.1.2.2 | Configure frontend part of the snow plowing issues with the software | 0.27d | 2020-05-25 15:45 | 2020-05-26 08:05 | 235FS+1d | 0d | Charles Hildebrant; Christine Johnson; Li-Min Wang | 4h | 46.67 |
| 237 | 4.7.2.2 | **Test the developed module** | 1.73d | 2020-05-26 14:05 | 2020-05-27 14:45 |  | 0d |  | 20h | 362.08 |
| 238 | 4.7.2.2.1 | Test the functionality of the module with implementation of API for snow plowing issues | 0.4d | 2020-05-26 14:05 | 2020-05-26 16:05 | 236FS+1d | 0d | Charles Hildebrant; Li-Min Wang; Christine Johnson; Mary Papero; Nina Stevens | 10h | 197.5 |
| 239 | 4.7.2.2.2 | Security test of the integrated part of the snow plowing issues module | 0.33d | 2020-05-27 13:05 | 2020-05-27 14:45 | 238FS+1d | 0d | Charles Hildebrant; Christine Johnson; Li-Min Wang; David K. Jaffe; Mary Papero; Nina Stevens | 10h | 164.58 |
| 240 | 4.7.2.3 | Status Report 2 for snow plowing issues | 0.12d | 2020-05-28 10:45 | 2020-05-28 11:23 | 239FS+1d | 0d | Charles Hildebrant; Christine Johnson; Li-Min Wang; David K. Jaffe; Mary Papero; Nina Stevens; Simaant Patil; City DPW Dept Mgr- Snow Plowing | 5h | 89.22 |
| 241 | 4.8 | **Meeting with Management and Stakeholders** | 3.3d | 2020-06-01 10:23 | 2020-06-03 10:53 |  | 0d |  | 18h | 182.93 |
| 242 | 4.8.1 | Meeting of City's IT team and Manager of each department | 0.06d | 2020-06-01 10:23 | 2020-06-01 10:42 | 240FS+3d | 0d | Charles Hildebrant; City DPW Dept Mgr- Parks Maintenance; City DPW Dept Mgr- Snow Plowing; City DPW Dept Mgr- Street Maint; City DPW Dept Mgr- Streetlights; City DPW Dept Mgr- Traffic Signal and Signage; City DPW Dept Mgr- Trash Pickup; David Pajak; JoAnne Sudderth; Li-Min Wang; Mary Papero; Michelle McCarthy; Nina Stevens; Philip Grome; Sagar Mohan; Simaant Patil | 5h | 88.98 |
| 243 | 4.8.2 | Meeting with Cityworks Personnel | 0.08d | 2020-06-02 13:42 | 2020-06-02 14:05 | 242FS+2d | 0d | Charles Hildebrant; Christine Johnson; City DPW Dept Mgr- Parks Maintenance; City DPW Dept Mgr- Snow Plowing; City DPW Dept Mgr- Street Maint; City DPW Dept Mgr- Streetlights; City DPW Dept Mgr- Traffic Signal and Signage; City DPW Dept Mgr- Trash Pickup; David K. Jaffe; JoAnne Sudderth; Nina Stevens; Samuel T. Moore; Simaant Patil | 5h | 58.75 |
| 244 | 4.8.3 | Meeting with Cityworks and stakeholders involved | 0.16d | 2020-06-03 10:05 | 2020-06-03 10:53 | 243FS+1d | 0d | Ben Walsh; City DPW Dept Mgr- Parks Maintenance; City DPW Dept Mgr- Snow Plowing; City DPW Dept Mgr- Street Maint; City DPW Dept Mgr- Streetlights; City DPW Dept Mgr- Traffic Signal and Signage; City DPW Dept Mgr- Trash Pickup; Jeremy Robinson; Samuel Edelstein; Simaant Patil | 8h | 35.2 |
| 245 | 5 | **Testing** | 14.01d | 2020-06-08 11:53 | 2020-06-19 09:56 |  | 0d |  | 95h | 2,576.43 |
| 246 | 5.1 | **Integrated Part Testing** | 14.01d | 2020-06-08 11:53 | 2020-06-19 09:56 |  | 0d |  | 95h | 2,576.43 |
| 247 | 5.1.1 | Behavorial testing | 0.8d | 2020-06-08 11:53 | 2020-06-08 16:53 | 244FS+5d | 0d | David K. Jaffe; Mary Papero; Nina Stevens; Philip Grome; Sagar Mohan | 20h | 535 |
| 248 | 5.1.2 | Stress Testing | 0.8d | 2020-06-10 09:53 | 2020-06-10 14:53 | 247FS+2d | 0d | David K. Jaffe; Mary Papero; Nina Stevens; Philip Grome; Sagar Mohan | 20h | 535 |
| 249 | 5.1.3 | **Quality Assurance Testing** | 0.33d | 2020-06-11 10:53 | 2020-06-11 13:33 |  | 0d |  | 5h | 190 |
| 250 | 5.1.3.1 | Create compliance report | 0.33d | 2020-06-11 10:53 | 2020-06-11 13:33 | 248FS+1d | 0d | Philip Grome; Sagar Mohan; Simaant Patil | 5h | 190 |
| 251 | 5.1.4 | Alpha Testing | 0.4d | 2020-06-12 15:33 | 2020-06-15 08:33 | 250FS+2d | 0d | David K. Jaffe; Mary Papero; Nina Stevens; Philip Grome; Sagar Mohan | 10h | 267.5 |

| ID | WBS | Task | Duration | Start | Finish | Predecessors | Total slack | Resources | Work | Cost |
| --- | --- | --- | --- | --- | --- | --- | --- | --- | --- | --- |
| 252 | 5.1.5 | **End User Testing** | 3.2d | 2020-06-15 14:33 | 2020-06-17 14:33 |  | 0d |  | 30h | 802.5 |
| 253 | 5.1.5.1 | Beta Testing | 0.6d | 2020-06-15 14:33 | 2020-06-16 08:33 | 251FS+1d | 0d | David K. Jaffe; Mary Papero; Nina Stevens; Philip Grome; Sagar Mohan | 15h | 401.25 |
| 254 | 5.1.5.2 | User Acceptance Testing | 0.6d | 2020-06-17 10:33 | 2020-06-17 14:33 | 253FS+2d | 0d | David K. Jaffe; Mary Papero; Nina Stevens; Philip Grome; Sagar Mohan | 15h | 401.25 |
| 255 | 5.1.6 | Meet with stakehokders | 0.14d | 2020-06-18 10:33 | 2020-06-18 11:16 | 254FS+1d | 0d | Ben Walsh; Charles Hildebrant; Christine Johnson; David K. Jaffe; David Pajak; Jeremy Robinson; Simaant Patil | 5h | 56.43 |
| 256 | 5.1.7 | Provide status reports | 0.33d | 2020-06-19 08:16 | 2020-06-19 09:56 | 255FS+1d | 0d | Philip Grome; Sagar Mohan; Simaant Patil | 5h | 190 |
| 257 | 6 | **Training** | 51.57d | 2020-06-22 11:56 | 2020-08-05 14:47 |  | 0d |  | 410h | 7,431.43 |
| 258 | 6.1 | **Customize training materials for each department** | 18.57d | 2020-06-22 11:56 | 2020-07-08 08:47 |  | 0d |  | 300h | 4,871.43 |
| 259 | 6.1.1 | Training Materials for Street repair issues | 1.43d | 2020-06-22 11:56 | 2020-06-23 11:04 | 256FS+2d | 0d | Christine Johnson; City DPW Dept Mgr- Street Maint; David K. Jaffe; Michelle McCarthy; Philip Grome; Sagar Mohan; Samuel T. Moore | 50h | 728.57 |
| 260 | 6.1.2 | Training Materials for Streetlight issues | 1.43d | 2020-06-24 14:04 | 2020-06-25 13:13 | 259FS+2d | 0d | Christine Johnson; David K. Jaffe; Michelle McCarthy; Philip Grome; Sagar Mohan; Samuel T. Moore; City DPW Dept Mgr- Streetlights | 50h | 728.57 |
| 261 | 6.1.3 | Training Materials for Traffic Signal/Signage issues | 1.43d | 2020-06-26 15:13 | 2020-06-29 14:21 | 260FS+2d | 0d | Christine Johnson; David K. Jaffe; Michelle McCarthy; Philip Grome; Sagar Mohan; Samuel T. Moore; City DPW Dept Mgr- Traffic Signal and Signage; Technical Training Fees | 50h | 1,228.57 |
| 262 | 6.1.4 | Training Materials for Trash Pickup issues | 1.43d | 2020-06-30 16:21 | 2020-07-01 15:30 | 261FS+2d | 0d | Christine Johnson; City DPW Dept Mgr- Street Maint; David K. Jaffe; Michelle McCarthy; Philip Grome; Sagar Mohan; Samuel T. Moore | 50h | 728.57 |
| 263 | 6.1.5 | Training Materials for Parks Maintenance issues | 1.43d | 2020-07-03 08:30 | 2020-07-03 16:39 | 262FS+2d | 0d | Christine Johnson; David K. Jaffe; Michelle McCarthy; Philip Grome; Sagar Mohan; Samuel T. Moore; City DPW Dept Mgr- Parks Maintenance | 50h | 728.57 |
| 264 | 6.1.6 | Training Materials for Snow Plowing issues | 1.43d | 2020-07-07 09:39 | 2020-07-08 08:47 | 263FS+2d | 0d | Christine Johnson; David K. Jaffe; Michelle McCarthy; Philip Grome; Sagar Mohan; Samuel T. Moore; City DPW Dept Mgr- Snow Plowing | 50h | 728.57 |
| 265 | 6.2 | **Department training** | 16d | 2020-07-13 09:47 | 2020-07-27 09:47 |  | 0d |  | 60h | 960 |
| 266 | 6.2.1 | Training for Street repair Department | 1d | 2020-07-13 09:47 | 2020-07-13 15:47 | 264FS+5d | 0d | City DPW Dept Mgr- Street Maint; Michelle McCarthy | 10h | 160 |
| 267 | 6.2.2 | Training for Streetlight Department | 1d | 2020-07-15 08:47 | 2020-07-15 14:47 | 266FS+2d | 0d | Michelle McCarthy; City DPW Dept Mgr- Streetlights | 10h | 160 |
| 268 | 6.2.3 | Training for Traffic Signal/ Signage Department | 1d | 2020-07-16 16:47 | 2020-07-17 13:47 | 267FS+2d | 0d | Michelle McCarthy; City DPW Dept Mgr- Traffic Signal and Signage | 10h | 160 |
| 269 | 6.2.4 | Training for Trash Pickup Department | 1d | 2020-07-20 15:47 | 2020-07-21 11:47 | 268FS+2d | 0d | Michelle McCarthy; City DPW Dept Mgr- Trash Pickup | 10h | 160 |
| 270 | 6.2.5 | Training for Parks Maintenance Department | 1d | 2020-07-22 14:47 | 2020-07-23 10:47 | 269FS+2d | 0d | Michelle McCarthy; City DPW Dept Mgr- Parks Maintenance | 10h | 160 |
| 271 | 6.2.6 | Training for Snow Plowing Department | 1d | 2020-07-24 13:47 | 2020-07-27 09:47 | 270FS+2d | 0d | Michelle McCarthy; City DPW Dept Mgr- Snow Plowing | 10h | 160 |
| 272 | 6.3 | Citizen In-App User training | 10d | 2020-07-28 11:47 | 2020-08-05 14:47 | 271FS+2d | 0d | Michelle McCarthy | 50h | 1,600 |
| 273 | 7 | **Approvals** | 3.9d | 2020-08-06 16:47 | 2020-08-11 11:17 |  | 0d |  | 38h | 677.5 |
| 274 | 7.1 | **Stakeholders' Meeting** | 3.9d | 2020-08-06 16:47 | 2020-08-11 11:17 |  | 0d |  | 38h | 677.5 |
| 275 | 7.1.1 | Provide product and process deliverables | 0.4d | 2020-08-06 16:47 | 2020-08-07 09:47 | 272FS+2d | 0d | Charles Hildebrant; Christine Johnson; David K. Jaffe; David Pajak; JoAnne Sudderth; Mary Papero; Michelle McCarthy; Simaant Patil; Ben Walsh; Jeremy Robinson | 20h | 362 |
| 276 | 7.1.2 | Feedback from stakeholders | 0.3d | 2020-08-10 11:47 | 2020-08-10 14:17 | 275FS+2d | 0d | Charles Hildebrant; Christine Johnson; David K. Jaffe; David Pajak; JoAnne Sudderth; Mary Papero; Michelle McCarthy; Simaant Patil; Ben Walsh; Jeremy Robinson | 15h | 271.5 |
| 277 | 7.1.3 | Sign-off on deliverables | 0.2d | 2020-08-11 10:17 | 2020-08-11 11:17 | 276FS+1d | 0d | Ben Walsh; Jeremy Robinson; Simaant Patil | 3h | 44 |

| ID | WBS | Task | Duration | Start | Finish | Predecessors | Total slack | Resources | Work | Cost |
| --- | --- | --- | --- | --- | --- | --- | --- | --- | --- | --- |
| 278 | 8 | **Project Closure** | 5.96d | 2020-08-12 14:17 | 2020-08-18 11:05 |  | 0d |  | 28h | 836.39 |
| 279 | 8.1 | Present Final Status Report | 1d | 2020-08-12 14:17 | 2020-08-13 10:17 | 277FS+2d | 0d | Simaant Patil | 5h | 220 |
| 280 | 8.2 | Present all deliverables | 0.67d | 2020-08-14 13:17 | 2020-08-14 16:37 | 279FS+2d | 0d | Sagar Mohan; Simaant Patil; Philip Grome | 10h | 380 |
| 281 | 8.3 | Project Final Sign-off | 0.15d | 2020-08-17 13:37 | 2020-08-17 14:22 | 280FS+1d | 0d | Ben Walsh; David Pajak; Jeremy Robinson; Simaant Patil | 3h | 33 |
| 282 | 8.4 | Final App Deployment | 0.14d | 2020-08-18 10:22 | 2020-08-18 11:05 | 281FS+1d | 0d | Charles Hildebrant; Christine Johnson; David K. Jaffe; David Pajak; JoAnne Sudderth; Li-Min Wang; Mary Papero; Michelle McCarthy; Nina Stevens; Philip Grome; Sagar Mohan; Samuel Edelstein; Samuel T. Moore; Simaant Patil | 10h | 203.39 |
